# NB-IoT development and certification device & system

Schedule from a web Gantt chart, 2024-09-23 to 2025-03-21.
Saturdays and Sundays are off

## Schedule

| ID | WBS | Task | Duration | Start | Finish | Predecessors | Complete | Status |
| --- | --- | --- | --- | --- | --- | --- | --- | --- |
| 2 | 1 | Requirement freeze | 10d | 2024-11-04 | 2024-11-15 |  | 100% | done |
| 3 | 2 | **E-maintainance to support ZA's requirement** | 1d | 2024-11-11 | 2024-11-11 |  |  |  |
| 4 | 2.1 | Development | 1d | 2024-11-11 | 2024-11-11 |  |  |  |
| 5 | 2.2 | Test | 1d | 2024-11-11 | 2024-11-11 |  |  |  |
| 6 | 3 | **SmartRead to support ZA's requirement** | 1d | 2024-11-11 | 2024-11-11 |  |  |  |
| 7 | 3.1 | Development | 1d | 2024-11-11 | 2024-11-11 |  |  |  |
| 8 | 3.2 | Test | 1d | 2024-11-11 | 2024-11-11 |  |  |  |
| 9 | 4 | **HES to support ZA's requirement** | 33d | 2024-11-13 | 2024-12-27 |  | 35% |  |
| 10 | 4.1 | Development | 23d | 2024-11-13 | 2024-12-13 |  | 50% |  |
| 11 | 4.2 | Test | 10d | 2024-12-16 | 2024-12-27 | 10 |  | waiting |
| 12 | 5 | **Meter development and certification** | 130d | 2024-09-23 | 2025-03-21 |  | 32% |  |
| 13 | 5.1 | **Meter development** | 35d | 2024-11-11 | 2024-12-27 |  | 51% |  |
| 14 | 5.1.1 | Development | 11d | 2024-11-11 | 2024-11-25 |  | 80% |  |
| 15 | 5.1.2 | Test | 10d | 2024-12-16 | 2024-12-27 | 10 | 20% | waiting |
| 16 | 5.2 | **Certification** | 130d | 2024-09-23 | 2025-03-21 |  | 29% |  |
| 17 | 5.2.1 | iLAC cert | 50d | 2024-09-23 | 2024-11-29 |  | 80% |  |
| 18 | 5.2.2 | ICASA cert | 65d | 2024-12-02 | 2025-02-28 |  |  | waiting |
| 19 | 5.2.3 | STS cert | 10d | 2024-12-30 | 2025-01-10 |  |  | waiting |
| 20 | 5.2.4 | NRCS cert | 15d | 2025-03-03 | 2025-03-21 | 18 |  | waiting |
| 21 | 6 | Integration Test (pending) | 1d | 2024-12-30 | 2024-12-30 |  |  | waiting |
